# 3.1何事WBS

How a schedule from MS Project changed from version to version. A marks actual dates.

## Version 1 (saved 2020-04-14)

Note of the change: Merge branch 'master' of https://github.com/biantiange/ProjectManagement

| ID | WBS | Task | Duration | Start | Finish | Predecessors | Total float | Constraint |
| --- | --- | --- | --- | --- | --- | --- | --- | --- |
| 1 | 1 | **启动** | 5d | 2020-02-20 | 2020-02-26 |  |  |  |
| 2 |  | 任命项目经理 | 1d | 2020-02-20 | 2020-02-20 |  |  |  |
| 3 |  | 指定里程碑计划 | 1d | 2020-02-20 | 2020-02-20 |  |  |  |
| 4 |  | 组建核心团队 | 1d | 2020-02-20 | 2020-02-20 |  |  | start no earlier than 2020-02-20 |
| 5 |  | 分析干系人 | 1d | 2020-02-21 | 2020-02-21 |  |  |  |
| 6 |  | 制定项目章程 | 1d | 2020-02-24 | 2020-02-24 | 2, 4, 3, 5 |  |  |
| 7 |  | 开项目启动大会 | 1d | 2020-02-25 | 2020-02-25 | 6 |  |  |
| 8 | 2 | **规划** | 16d | 2020-03-27 | 2020-04-17 |  |  |  |
| 9 | 2.1 | **规划范围** | 10d | 2020-02-26 | 2020-03-10 |  |  |  |
| 10 |  | 制定需求说明书 | 5d | 2020-02-26 | 2020-03-03 | 7 | -2d |  |
| 11 |  | 界面设计 | 5d | 2020-02-27 | 2020-03-04 | 10SS | -3d | start no earlier than 2020-02-27 |
| 12 |  | 详细设计说明书 | 3d | 2020-02-27 | 2020-03-02 | 10SS | -1d | start no earlier than 2020-02-27 |
| 13 |  | 范围说明书 | 2d | 2020-02-27 | 2020-02-28 | 10SS | 0d | start no earlier than 2020-02-27 |
| 14 |  | 创建WBS | 2d | 2020-03-05 | 2020-03-06 | 11, 12, 13 | -3d | start no earlier than 2020-02-28 |
| 15 |  | 形成范围基准 | 1d | 2020-03-09 | 2020-03-09 | 14 | -3d |  |
| 16 | 2.2 | **规划时间** | 5d | 2020-03-10 | 2020-03-16 |  |  |  |
| 17 |  | 排列工作包顺序 | 1d | 2020-03-10 | 2020-03-10 | 15 | -3d |  |
| 18 |  | 估算资源 | 2d | 2020-03-11 | 2020-03-12 | 17 | -3d |  |
| 19 |  | 估算持续时间 | 2d | 2020-03-13 | 2020-03-16 | 18 | -3d |  |
| 20 |  | 制定进度计划 | 1d | 2020-03-17 | 2020-03-17 | 19 | -3d |  |
| 21 |  | 形成进度基准 | 1d | 2020-03-18 | 2020-03-18 | 20 | -3d |  |
| 22 | 2.3 | **规划成本** | 3d | 2020-03-19 | 2020-03-23 |  |  |  |
| 23 |  | 项目成本估算 | 3d | 2020-03-19 | 2020-03-23 | 21 | -3d |  |
| 24 |  | 项目预算 | 2d | 2020-03-24 | 2020-03-25 | 23 | -3d |  |
| 25 |  | 形成范围基准 | 1d | 2020-03-26 | 2020-03-26 | 24 | -3d |  |
| 26 | 2.4 | **规划质量** | 7d | 2020-03-27 | 2020-04-06 |  |  |  |
| 27 |  | 制定测试计划 | 2d | 2020-03-27 | 2020-03-30 | 15 | -1d |  |
| 28 |  | 制定测试用例 | 6d | 2020-03-31 | 2020-04-07 | 27 | -1d |  |
| 29 | 2.5 | **规划人力资源** | 4d | 2020-03-27 | 2020-04-01 |  | 8d |  |
| 30 |  | 制定人力资源计划 | 2d | 2020-03-27 | 2020-03-30 | 18 | 8d |  |
| 31 |  | 制定人员配备管理计划 | 2d | 2020-03-31 | 2020-04-01 | 30 | 8d |  |
| 32 | 2.6 | **规划沟通** | 2d | 2020-04-02 | 2020-04-03 |  | 10d |  |
| 33 |  | 制定沟通管理计划 | 2d | 2020-04-02 | 2020-04-03 | 31 | 10d |  |
| 34 | 2.7 | **规划采购** | 7d | 2020-03-27 | 2020-04-06 |  | 9d |  |
| 35 |  | 自制外购分析 | 2d | 2020-03-27 | 2020-03-30 | 18 | 9d |  |
| 36 |  | 制定采购文件 | 5d | 2020-03-31 | 2020-04-06 | 35 | 9d |  |
| 37 | 2.8 | **规划风险** | 3d | 2020-04-07 | 2020-04-09 |  | 5d |  |
| 38 |  | 识别风险 | 1d | 2020-04-07 | 2020-04-07 | 16, 22, 26, 29 | 5d |  |
| 39 |  | 风险分析 | 1d | 2020-04-08 | 2020-04-08 | 38 | 5d |  |
| 40 |  | 指定风险登记册 | 1d | 2020-04-09 | 2020-04-09 | 39 | 5d |  |
| 41 |  | 规划整合 | 1d | 2020-04-10 | 2020-04-10 | 40 | 5d |  |
| 42 | 3 | **执行与监控** | 46d | 2020-04-13 | 2020-06-15 |  |  |  |
| 43 |  | 组建项目团队 | 3d | 2020-04-13 | 2020-04-15 | 18 | 8d |  |
| 44 | 3.2 | **项目执行** | 16d | 2020-04-16 | 2020-05-07 |  | 8d |  |
| 45 | 3.2.1 | **登录模块** | 3d | 2020-04-16 | 2020-04-20 |  | 31d |  |
| 46 |  | 注册登录 | 3d | 2020-04-16 | 2020-04-20 | 43 | 31d |  |
| 47 | 3.2.2 | **主页模块** | 16d | 2020-04-16 | 2020-05-07 |  | 8d |  |
| 48 | 3.2.2.1 | **活动模块** | 7d | 2020-04-21 | 2020-04-29 |  | 31d |  |
| 49 |  | 活动主页 | 3d | 2020-04-21 | 2020-04-23 | 46 | 31d |  |
| 50 |  | 组织详情页 | 2d | 2020-04-24 | 2020-04-27 | 49 | 31d |  |
| 51 |  | 页面详情活动页 | 2d | 2020-04-28 | 2020-04-29 | 50 | 31d |  |
| 52 | 3.2.2.2 | **跳槽市场模块** | 5d | 2020-04-30 | 2020-05-06 |  |  |  |
| 53 |  | 商品详情 | 3d | 2020-04-30 | 2020-05-04 | 43 | 0d |  |
| 54 |  | 购买下单 | 2d | 2020-05-05 | 2020-05-06 | 53 | 0d |  |
| 55 |  | 咨询商家 | 2d | 2020-04-30 | 2020-05-01 | 43 | 3d |  |
| 56 |  | 求购商品 | 1d | 2020-04-30 | 2020-04-30 | 43 | 4d |  |
| 57 | 3.2.2.3 | **周边模块** | 14d | 2020-04-16 | 2020-05-05 |  | 8d |  |
| 58 |  | 周边主页 | 2d | 2020-04-16 | 2020-04-17 | 43 | 8d |  |
| 59 | 3.2.2.3.2 | **美食** | 8d | 2020-04-20 | 2020-04-29 |  | 31d |  |
| 60 |  | 浏览美食 | 3d | 2020-04-20 | 2020-04-22 | 58 | 31d |  |
| 61 |  | 店铺详情 | 3d | 2020-04-23 | 2020-04-27 | 60 | 31d |  |
| 62 |  | 购买下单 | 2d | 2020-04-28 | 2020-04-29 | 61 | 31d |  |
| 63 | 3.2.2.3.3 | **美景** | 4d | 2020-04-30 | 2020-05-05 |  |  |  |
| 64 |  | 浏览景点 | 3d | 2020-04-30 | 2020-05-04 | 58 | 0d |  |
| 65 |  | 景点详情 | 1d | 2020-05-05 | 2020-05-05 | 64 | 0d |  |
| 66 | 3.2.2.4 | **咨询模块** | 3d | 2020-04-16 | 2020-04-20 |  | 38d |  |
| 67 |  | 咨询主页 | 1d | 2020-04-16 | 2020-04-16 | 43 | 38d |  |
| 68 |  | 校内交流 | 2d | 2020-04-17 | 2020-04-20 | 67 | 38d |  |
| 69 |  | 校外交流 | 1d | 2020-04-17 | 2020-04-17 | 67 | 39d |  |
| 70 |  | 学习资料 | 1d | 2020-04-17 | 2020-04-17 | 67 | 39d |  |

| ID | WBS | Task | Duration | Start | Finish | Predecessors | Total float | Constraint |
| --- | --- | --- | --- | --- | --- | --- | --- | --- |
| 71 | 3.2.2.5 | **个人中心模块** | 16d | 2020-04-16 | 2020-05-07 |  | 25d |  |
| 72 |  | 个人展示 | 1d | 2020-04-16 | 2020-04-16 | 43 | 36d |  |
| 73 |  | 认证中心 | 2d | 2020-04-17 | 2020-04-20 | 72 | 36d |  |
| 74 |  | 购物清单 | 1d | 2020-05-07 | 2020-05-07 | 54, 43 | 25d |  |
| 75 |  | 我的动态及消息 | 2d | 2020-04-21 | 2020-04-22 | 73 | 36d |  |
| 76 | 3.3 | **项目监控** | 6d | 2020-05-01 | 2020-05-08 |  |  |  |
| 77 |  | 各项指标监控 | 3d | 2020-05-01 | 2020-05-05 | 43 | 1d |  |
| 78 |  | 监控评审 | 1d | 2020-05-06 | 2020-05-06 | 77 | 1d |  |
| 79 |  | 变更评审 | 1d | 2020-05-07 | 2020-05-07 | 78 | 1d |  |
| 80 |  | 例会 | 1d | 2020-05-08 | 2020-05-08 | 43 | 26d | start no earlier than 2020-05-08 |
| 81 | 3.4 | **管理干系人** | 1d | 2020-05-11 | 2020-05-11 |  |  |  |
| 82 |  | 发布项目信息 | 1d | 2020-05-11 | 2020-05-11 | 43 | 0d |  |
| 83 |  | 报告监控指标 | 1d | 2020-05-11 | 2020-05-11 | 43 | 0d |  |
| 84 |  | 干系人沟通 | 1d | 2020-05-11 | 2020-05-11 | 43 | 0d |  |
| 85 | 3.5 | **团队建设** | 1d | 2020-05-12 | 2020-05-12 |  |  |  |
| 86 |  | 培训 | 1d | 2020-05-12 | 2020-05-12 | 43 | 0d |  |
| 87 |  | 娱乐活动 | 1d | 2020-05-12 | 2020-05-12 | 43 | 0d |  |
| 88 |  | 沟通 | 1d | 2020-05-12 | 2020-05-12 | 43 | 0d |  |
| 89 |  | 采购 | 20d | 2020-04-16 | 2020-05-13 | 43 | 23d |  |
| 90 |  | 项目验收 | 1d | 2020-05-15 | 2020-05-15 | 44 | 20d | start no earlier than 2020-05-15 |
| 91 | 4 | **收尾** | 1d | 2020-05-18 | 2020-05-18 |  | 20d |  |
| 92 |  | 项目经验 | 1d | 2020-05-18 | 2020-05-18 | 90 | 20d |  |
| 93 |  | 结束采购 | 1d | 2020-05-18 | 2020-05-18 | 90 | 20d |  |
| 94 |  | 项目内部收尾 | 1d | 2020-05-18 | 2020-05-18 | 90 | 20d |  |

## Version 2 (saved 2020-04-27)

Note of the change: Merge branch 'master' of https://github.com/biantiange/ProjectManagement

Last finish stays 2020-06-15.

Changed:

| ID | Task | Start | Finish | Duration | Total float | Predecessors | Other |
| --- | --- | --- | --- | --- | --- | --- | --- |
| 2 | 任命项目经理 |  |  |  |  |  | resources UI设计师; 产品经理; 测试专家; 技术专家; 项目经理; 设计专家 → none |
| 4 | 组建核心团队 |  |  |  |  |  | resources 项目经理 → 测试员1; 产品经理; 项目经理; 技术专家 |
| 5 | 分析干系人 |  |  |  |  |  | resources 项目经理 → UI设计师; 测试员1; 测试专家; 产品经理; 程序员1; 程序员2; 程序员3; 项目经理; 技术专家 |
| 7 | 开项目启动大会 |  |  |  |  |  | resources 产品经理; 项目经理 → 测试员1; 产品经理; 测试专家; 项目经理; 技术专家 |
| 10 | 制定需求说明书 |  | 2020-03-03 → 2020-03-10 (+7d) | 5d → 10d |  |  |  |
| 11 | 界面设计 |  |  |  |  |  | resources UI设计师 → 测试员1 |
| 12 | 详细设计说明书 |  | 2020-03-02 → 2020-03-04 (+2d) | 3d → 5d | -1d → -3d |  | resources 设计专家 → 测试员1 |
| 13 | 范围说明书 |  | 2020-02-28 → 2020-03-02 (+3d) | 2d → 3d | 0d → -1d |  |  |
| 27 | 制定测试计划 |  |  |  |  |  | resources 质量专家 → 测试专家 |
| 28 | 制定测试用例 |  |  |  |  |  | resources 质量专家 → 测试专家 |
| 29 | **规划人力资源** |  | 2020-04-01 → 2020-03-31 (-1d) | 4d → 3d | 8d → 9d |  |  |
| 31 | 制定人员配备管理计划 |  | 2020-04-01 → 2020-03-31 (-1d) | 2d → 1d | 8d → 9d |  |  |
| 32 | **规划沟通** | 2020-04-02 → 2020-04-01 (-1d) | 2020-04-03 → 2020-04-02 (-1d) |  | 10d → 11d |  |  |
| 33 | 制定沟通管理计划 | 2020-04-02 → 2020-04-01 (-1d) | 2020-04-03 → 2020-04-02 (-1d) |  | 10d → 11d |  |  |
| 43 | 组建项目团队 |  |  |  |  |  | resources 测试专家; 技术专家; 项目经理 → 测试员1; 测试专家; 产品经理; 技术专家; 项目经理 |
| 76 | **项目监控** | 2020-05-01 → 2020-05-15 (+14d) | 2020-05-08 → 2020-05-19 (+11d) | 6d → 3d |  |  |  |
| 77 | 各项指标监控 | 2020-05-01 → 2020-04-16 (-15d) | 2020-05-05 → 2020-04-29 (-6d) | 3d → 10d | 1d → none |  | constraint none → start no earlier than 2020-04-16; resources 测试专家; 项目经理 → 项目经理; 技术专家 |
| 78 | 监控评审 | 2020-05-06 → 2020-05-05 (-1d) | 2020-05-06 → 2020-05-05 (-1d) |  | 1d → none |  | constraint none → start no earlier than 2020-05-05; resources 设计专家; 项目经理 → 产品经理; 项目经理; 技术专家 |
| 79 | 变更评审 | 2020-05-07 → 2020-05-06 (-1d) | 2020-05-07 → 2020-05-06 (-1d) |  | 1d → none |  | resources 设计专家; 项目经理 → 测试专家; 技术专家; 项目经理 |
| 80 | 例会 | 2020-05-08 → 2020-05-01 (-7d) | 2020-05-08 → 2020-05-14 (+6d) | 1d → 10d | 26d → none |  | constraint start no earlier than 2020-05-08 → start no earlier than 2020-05-01; resources 设计专家; 项目经理; UI设计师; 测试专家; 产品经理; 程序员1; 程序员2; 程序员3; 程序员4; 技术专家; 质量专家 → 测试专家; 技术专家; 项目经理; 产品经理 |
| 85 | **团队建设** | 2020-05-12 → 2020-05-17 (+5d) | 2020-05-12 → 2020-05-17 (+5d) |  |  |  |  |
| 86 | 培训 | 2020-05-12 → 2020-04-29 (-13d) | 2020-05-12 → 2020-05-15 (+3d) | 1d → 13d | 0d → none |  | constraint none → start no earlier than 2020-04-29; resources UI设计师; 测试专家; 产品经理; 程序员1; 程序员2; 程序员3; 程序员4; 技术专家; 设计专家; 项目经理; 质量专家 → UI设计师; 测试专家; 测试员1; 产品经理; 程序员1; 程序员2; 程序员3; 技术专家; 项目经理 |
| 87 | 娱乐活动 | 2020-05-12 → 2020-04-29 (-13d) | 2020-05-12 → 2020-05-15 (+3d) | 1d → 13d | 0d → none |  | constraint none → start no earlier than 2020-04-29; resources UI设计师; 测试专家; 产品经理; 程序员1; 程序员2; 程序员3; 程序员4; 技术专家; 设计专家; 项目经理; 质量专家 → UI设计师; 测试员1; 测试专家; 产品经理; 程序员1; 程序员2; 程序员3; 技术专家; 项目经理 |
| 88 | 沟通 | 2020-05-12 → 2020-04-29 (-13d) | 2020-05-12 → 2020-05-15 (+3d) | 1d → 13d | 0d → none |  | constraint none → start no earlier than 2020-04-29; resources UI设计师; 测试专家; 产品经理; 程序员1; 程序员2; 程序员3; 程序员4; 技术专家; 设计专家; 项目经理; 质量专家 → 项目经理; UI设计师; 测试员1; 测试专家; 产品经理; 程序员1; 程序员2; 程序员3; 技术专家 |
| 89 | 采购 |  | 2020-05-13 → 2020-04-16 (-27d) | 20d → 1d | 23d → none |  |  |
| 90 | 项目验收 | 2020-05-15 → 2020-04-29 (-16d) | 2020-05-15 → 2020-05-14 (-1d) | 1d → 12d | 20d → none | 44 → 43 | constraint start no earlier than 2020-05-15 → start no earlier than 2020-04-29; resources UI设计师; 测试专家; 产品经理; 程序员1; 程序员2; 程序员3; 程序员4; 技术专家; 设计专家; 项目经理; 质量专家 → 产品经理; 技术专家; 项目经理 |
| 91 | **收尾** | 2020-05-18 → 2020-05-15 (-3d) | 2020-05-18 → 2020-05-15 (-3d) |  | 20d → 21d |  |  |
| 92 | 项目经验 | 2020-05-18 → 2020-05-15 (-3d) | 2020-05-18 → 2020-05-15 (-3d) |  | 20d → 21d |  | resources UI设计师; 测试专家; 产品经理; 程序员1; 程序员2; 程序员3; 程序员4; 技术专家; 设计专家; 项目经理; 质量专家 → 项目经理; UI设计师; 技术专家; 测试专家; 产品经理 |
| 93 | 结束采购 | 2020-05-18 → 2020-05-15 (-3d) | 2020-05-18 → 2020-05-15 (-3d) |  | 20d → 21d |  | resources 项目经理 → 项目经理; UI设计师 |
| 94 | 项目内部收尾 | 2020-05-18 → 2020-05-15 (-3d) | 2020-05-18 → 2020-05-15 (-3d) |  | 20d → 21d |  | resources UI设计师; 测试专家; 产品经理; 程序员1; 程序员2; 程序员3; 程序员4; 技术专家; 设计专家; 项目经理; 质量专家 → UI设计师; 测试专家; 技术专家; 项目经理 |
